Schedule from MS Project, 2024-03-06 to 2024-04-01, costs in $.

## Calendars

- Standard: Mon-Fri 08:00-12:00, 13:00-17:00; Sat-Sun off.

## Resources

| Resource | Rate |
| --- | --- |
| Project manager | 155 |
| Electrician Technician 1 | 29 |
| Electrician Technician 2 | 29 |
| Electrician Technician 3 | 29 |
| Electrician Technician 4 | 29 |
| Camera/Alarm System installer 1 | 25 |
| Camera/Alarm System installer 2 | 25 |
| Camera/Alarm System installer 3 | 25 |
| Camera/Alarm System installer 4 | 25 |
| General Construction worker 1 | 29 |
| General Construction worker 2 | 29 |
| General Construction worker 3 | 29 |
| General Construction worker 4 | 29 |
| Network Tester 1 | 25 |
| Network Tester 2 | 25 |
| Network Tester 3 | 25 |
| Network Tester 4 | 25 |
| Trainer 1 | 44 |
| Tainer 2 | 44 |
| Security Guard 1 | 20 |
| Security Guard 2 | 20 |
| Cord | 20 |
| Camera | 250 |
| Alarm System Unit | 2000 |
| Mirror | 20 |
| Cleaning Supplies | 20 |

## Schedule

| ID | WBS | Task | Type | Duration | Start | Finish | Predecessors | Total slack | Free slack | Resources | Work | Cost |
| --- | --- | --- | --- | --- | --- | --- | --- | --- | --- | --- | --- | --- |
| 1 | 1 | **Walmart Security System** |  | 18.12d | 2024-03-06 | 2024-04-01 |  | 0d |  | Project manager | 1277h | 93,499 |
| 2 | 1.1 | Kick-Off Meeting |  | 1h | 2024-03-06 | 2024-03-06 |  | 0d |  | Camera/Alarm System installer 1; Camera/Alarm System installer 2; Camera/Alarm System installer 3; Camera/Alarm System installer 4; Electrician Technician 1; Electrician Technician 2; Electrician Technician 3; Electrician Technician 4; General Construction worker 1; General Construction worker 2; General Construction worker 3; General Construction worker 4; Network Tester 1; Network Tester 2; Network Tester 3; Network Tester 4; Security Guard 1; Security Guard 2; Trainer 1; Tainer 2 | 20h | 560 |
| 3 | 1.2 | Security Guards |  | 15d | 2024-03-06 | 2024-03-27 | 2 | 3d |  | Security Guard 1; Security Guard 2 | 240h | 4,800 |
| 4 | 1.3 | **A1** |  | 8d | 2024-03-06 | 2024-03-18 |  | 2d |  |  | 72h | 7,792 |
| 5 | 1.3.1 | A1: Electricity Extension |  | 3d | 2024-03-06 | 2024-03-11 | 2 | 2d | 0d | Electrician Technician 1; Cord [2000%] | 24h | 1,096 |
| 6 | 1.3.2 | A1: Security Camera Installation |  | 2d | 2024-03-11 | 2024-03-13 | 5 | 2d | 0d | Camera/Alarm System installer 1; Camera [2000%] | 16h | 5,400 |
| 7 | 1.3.3 | A1: Cleaning |  | 1d | 2024-03-13 | 2024-03-14 | 6 | 2d | 0d | General Construction worker 1; Cleaning Supplies [500%] | 8h | 332 |
| 8 | 1.3.4 | A1: Security Camera Inspection |  | 1d | 2024-03-14 | 2024-03-15 | 7 | 8d | 2d | Network Tester 1 | 8h | 200 |
| 9 | 1.3.5 | A1: Mirror Installation |  | 2d | 2024-03-14 | 2024-03-18 | 7 | 2d | 0d | General Construction worker 1; Mirror [1500%] | 16h | 764 |
| 10 | 1.3.6 | A1: Ends | milestone | 0d | 2024-03-18 | 2024-03-18 | 9 | 10d |  |  |  |  |
| 11 | 1.4 | **A2** |  | 7d | 2024-03-11 | 2024-03-20 |  | 5d |  |  | 40h | 2,586 |
| 12 | 1.4.1 | A2: Electricity Extension |  | 1d | 2024-03-11 | 2024-03-12 | 5 | 5d | 0d | Cord [500%]; Electrician Technician 1 | 8h | 332 |
| 13 | 1.4.2 | A2: Security Camera Installation |  | 1d | 2024-03-13 | 2024-03-14 | 12, 6 | 4d | 0d | Camera [500%]; Camera/Alarm System installer 1 | 8h | 1,450 |
| 14 | 1.4.3 | A2: Cleaning |  | 1d | 2024-03-18 | 2024-03-19 | 13, 7, 9 | 2d | 0d | General Construction worker 1; Cleaning Supplies [200%] | 8h | 272 |
| 15 | 1.4.4 | A2: Security Camera Inspection |  | 1d | 2024-03-19 | 2024-03-20 | 14, 8 | 6d | 1d | Network Tester 1 | 8h | 200 |
| 16 | 1.4.5 | A2: Mirror Installation |  | 1d | 2024-03-19 | 2024-03-20 | 9, 14 | 2d | 0d | General Construction worker 1; Mirror [500%] | 8h | 332 |
| 17 | 1.4.6 | A2: Ends | milestone | 0d | 2024-03-20 | 2024-03-20 | 16 | 8d |  |  |  |  |
| 18 | 1.5 | **A3** |  | 8d | 2024-03-12 | 2024-03-22 |  | 6d |  |  | 40h | 2,876 |
| 19 | 1.5.1 | A3: Electricity Extension |  | 1d | 2024-03-12 | 2024-03-13 | 12 | 6d | 0d | Cord [600%]; Electrician Technician 1 | 8h | 352 |
| 20 | 1.5.2 | A3: Security Camera Installation |  | 1d | 2024-03-14 | 2024-03-15 | 19, 13 | 5d | 0d | Camera [600%]; Camera/Alarm System installer 1 | 8h | 1,700 |
| 21 | 1.5.3 | A3: Cleaning |  | 1d | 2024-03-20 | 2024-03-21 | 20, 14, 16 | 2d | 0d | General Construction worker 1; Cleaning Supplies [200%] | 8h | 272 |
| 22 | 1.5.4 | A3: Security Camera Inspection |  | 1d | 2024-03-21 | 2024-03-22 | 21, 15 | 5d | 1d | Network Tester 1 | 8h | 200 |
| 23 | 1.5.5 | A3: Mirror Installation |  | 1d | 2024-03-21 | 2024-03-22 | 16, 21 | 2d | 0d | General Construction worker 1; Mirror [600%] | 8h | 352 |
| 24 | 1.5.6 | A3: Ends | milestone | 0d | 2024-03-22 | 2024-03-22 | 23 | 6d |  |  |  |  |

Notes:
- 4: This section is located on the "East" side of the store, refer to the Misc Docs tab on the PMP file.
- 11: This section is located on the "North East" side of the store, refer to the Misc Docs tab on the PMP file.
- 18: This section is located on the "North" side of the store, refer to the Misc Docs tab on the PMP file.

| ID | WBS | Task | Type | Duration | Start | Finish | Predecessors | Total slack | Free slack | Resources | Work | Cost |
| --- | --- | --- | --- | --- | --- | --- | --- | --- | --- | --- | --- | --- |
| 25 | 1.6 | **A4** |  | 9d | 2024-03-13 | 2024-03-26 |  | 4d |  |  | 40h | 2,876 |
| 26 | 1.6.1 | A4: Electricity Extension |  | 1d | 2024-03-13 | 2024-03-14 | 19 | 7d | 1d | Cord [600%]; Electrician Technician 1 | 8h | 352 |
| 27 | 1.6.2 | A4: Security Camera Installation |  | 1d | 2024-03-15 | 2024-03-18 | 26, 20 | 6d | 4d | Camera [600%]; Camera/Alarm System installer 1 | 8h | 1,700 |
| 28 | 1.6.3 | A4: Cleaning |  | 1d | 2024-03-22 | 2024-03-25 | 27, 21, 23 | 2d | 0d | General Construction worker 1; Cleaning Supplies [200%] | 8h | 272 |
| 29 | 1.6.4 | A4: Security Camera Inspection |  | 1d | 2024-03-25 | 2024-03-26 | 28, 22 | 4d |  | Network Tester 1 | 8h | 200 |
| 30 | 1.6.5 | A4: Mirror Installation |  | 1d | 2024-03-25 | 2024-03-26 | 23, 28 | 2d | 0d | General Construction worker 1; Mirror [600%] | 8h | 352 |
| 31 | 1.6.6 | A4: Ends | milestone | 0d | 2024-03-26 | 2024-03-26 | 30 | 2d |  |  |  |  |
| 32 | 1.7 | **B1** |  | 8d | 2024-03-06 | 2024-03-18 |  | 2d |  |  | 72h | 6,322 |
| 33 | 1.7.1 | B1: Electricity Extension |  | 3d | 2024-03-06 | 2024-03-11 | 2 | 2d | 0d | Electrician Technician 2; Cord [1500%] | 24h | 996 |
| 34 | 1.7.2 | B1: Security Camera Installation |  | 2d | 2024-03-11 | 2024-03-13 | 33 | 2d | 0d | Camera/Alarm System installer 2; Camera [1500%] | 16h | 4,150 |
| 35 | 1.7.3 | B1: Cleaning |  | 1d | 2024-03-13 | 2024-03-14 | 34 | 2d | 0d | General Construction worker 2; Cleaning Supplies [400%] | 8h | 312 |
| 36 | 1.7.4 | B1: Security Camera Inspection |  | 1d | 2024-03-14 | 2024-03-15 | 35 | 8d | 2d | Network Tester 2 | 8h | 200 |
| 37 | 1.7.5 | B1: Mirror Installation |  | 2d | 2024-03-14 | 2024-03-18 | 35 | 2d | 0d | General Construction worker 2; Mirror [1000%] | 16h | 664 |
| 38 | 1.7.6 | B1: Ends | milestone | 0d | 2024-03-18 | 2024-03-18 | 37 | 10d |  |  |  |  |
| 39 | 1.8 | **B2** |  | 7d | 2024-03-11 | 2024-03-20 |  | 5d |  |  | 40h | 3,166 |
| 40 | 1.8.1 | B2: Electricity Extension |  | 1d | 2024-03-11 | 2024-03-12 | 33 | 5d | 0d | Electrician Technician 2; Cord [700%] | 8h | 372 |
| 41 | 1.8.2 | B2: Security Camera Installation |  | 1d | 2024-03-13 | 2024-03-14 | 40, 34 | 4d | 0d | Camera/Alarm System installer 2; Camera [700%] | 8h | 1,950 |
| 42 | 1.8.3 | B2: Cleaning |  | 1d | 2024-03-18 | 2024-03-19 | 41, 35, 37 | 2d | 0d | General Construction worker 2; Cleaning Supplies [200%] | 8h | 272 |
| 43 | 1.8.4 | B2: Security Camera Inspection |  | 1d | 2024-03-19 | 2024-03-20 | 42, 36 | 6d | 1d | Network Tester 2 | 8h | 200 |
| 44 | 1.8.5 | B2: Mirror Installation |  | 1d | 2024-03-19 | 2024-03-20 | 37, 42 | 2d | 0d | General Construction worker 2; Mirror [700%] | 8h | 372 |
| 45 | 1.8.6 | B2: Ends | milestone | 0d | 2024-03-20 | 2024-03-20 | 44 | 8d |  |  |  |  |
| 46 | 1.9 | **B3** |  | 8d | 2024-03-12 | 2024-03-22 |  | 6d |  |  | 40h | 3,166 |
| 47 | 1.9.1 | B3: Electricity Extension |  | 1d | 2024-03-12 | 2024-03-13 | 40 | 6d | 0d | Electrician Technician 2; Cord [700%] | 8h | 372 |
| 48 | 1.9.2 | B3: Security Camera Installation |  | 1d | 2024-03-14 | 2024-03-15 | 47, 41 | 5d | 0d | Camera/Alarm System installer 2; Camera [700%] | 8h | 1,950 |
| 49 | 1.9.3 | B3: Cleaning |  | 1d | 2024-03-20 | 2024-03-21 | 48, 42, 44 | 2d | 0d | General Construction worker 2; Cleaning Supplies [200%] | 8h | 272 |
| 50 | 1.9.4 | B3: Security Camera Inspection |  | 1d | 2024-03-21 | 2024-03-22 | 49, 43 | 5d | 1d | Network Tester 2 | 8h | 200 |
| 51 | 1.9.5 | B3: Mirror Installation |  | 1d | 2024-03-21 | 2024-03-22 | 44, 49 | 2d | 0d | General Construction worker 2; Mirror [700%] | 8h | 372 |
| 52 | 1.9.6 | B3: Ends | milestone | 0d | 2024-03-22 | 2024-03-22 | 51 | 6d |  |  |  |  |

Notes:
- 25: This section is located on the "North" side of the store, refer to the Misc Docs tab on the PMP file.
- 32: This section is located on the "West" side of the store, refer to the Misc Docs tab on the PMP file.
- 39: This section is located on the "South West" side of the store, refer to the Misc Docs tab on the PMP file.
- 46: This section is located on the "South East" side of the store, refer to the Misc Docs tab on the PMP file.

| ID | WBS | Task | Type | Duration | Start | Finish | Predecessors | Total slack | Free slack | Resources | Work | Cost |
| --- | --- | --- | --- | --- | --- | --- | --- | --- | --- | --- | --- | --- |
| 53 | 1.10 | **C1** |  | 7d | 2024-03-06 | 2024-03-15 |  | 0d |  |  | 64h | 4,660 |
| 54 | 1.10.1 | C1: Electricity Extension |  | 2d | 2024-03-06 | 2024-03-08 | 2 | 0d |  | Electrician Technician 3; Cord [1000%] | 16h | 664 |
| 55 | 1.10.2 | C1: Security Camera Installation |  | 2d | 2024-03-08 | 2024-03-12 | 54 | 0d |  | Camera/Alarm System installer 3; Camera [1000%] | 16h | 2,900 |
| 56 | 1.10.3 | C1: Cleaning |  | 1d | 2024-03-12 | 2024-03-13 | 55 | 0d |  | General Construction worker 3; Cleaning Supplies [300%] | 8h | 292 |
| 57 | 1.10.4 | C1: Security Camera Inspection |  | 1d | 2024-03-13 | 2024-03-14 | 56 | 8d | 2d | Network Tester 3 | 8h | 200 |
| 58 | 1.10.5 | C1: Mirror Installation |  | 2d | 2024-03-13 | 2024-03-15 | 56 | 0d |  | General Construction worker 3; Mirror [700%] | 16h | 604 |
| 59 | 1.10.6 | C1: Ends | milestone | 0d | 2024-03-15 | 2024-03-15 | 58 | 11d |  |  |  |  |
| 60 | 1.11 | **C2** |  | 7d | 2024-03-08 | 2024-03-19 |  | 1d |  |  | 48h | 3,108 |
| 61 | 1.11.1 | C2: Electricity Extension |  | 2d | 2024-03-08 | 2024-03-12 | 54 | 1d | 0d | Electrician Technician 3; Cord [600%] | 16h | 584 |
| 62 | 1.11.2 | C2: Security Camera Installation |  | 1d | 2024-03-12 | 2024-03-13 | 61, 55 | 2d | 1d | Camera/Alarm System installer 3; Camera [600%] | 8h | 1,700 |
| 63 | 1.11.3 | C2: Cleaning |  | 1d | 2024-03-15 | 2024-03-18 | 62, 56, 58 | 0d |  | General Construction worker 3; Cleaning Supplies [200%] | 8h | 272 |
| 64 | 1.11.4 | C2: Security Camera Inspection |  | 1d | 2024-03-18 | 2024-03-19 | 63, 57 | 6d | 1d | Network Tester 3 | 8h | 200 |
| 65 | 1.11.5 | C2: Mirror Installation |  | 1d | 2024-03-18 | 2024-03-19 | 58, 63 | 0d |  | General Construction worker 3; Mirror [600%] | 8h | 352 |
| 66 | 1.11.6 | C2: Ends | milestone | 0d | 2024-03-19 | 2024-03-19 | 65 | 9d |  |  |  |  |
| 67 | 1.12 | **C3** |  | 8d | 2024-03-12 | 2024-03-22 |  | 1d |  |  | 56h | 3,308 |
| 68 | 1.12.1 | C3: Electricity Extension |  | 2d | 2024-03-12 | 2024-03-14 | 61 | 1d | 0d | Electrician Technician 3; Cord [600%] | 16h | 584 |
| 69 | 1.12.2 | C3: Security Camera Installation |  | 2d | 2024-03-14 | 2024-03-18 | 68, 62 | 1d | 0d | Camera/Alarm System installer 3; Camera [600%] | 16h | 1,900 |
| 70 | 1.12.3 | C3: Cleaning |  | 1d | 2024-03-19 | 2024-03-20 | 69, 63, 65 | 0d |  | General Construction worker 3; Cleaning Supplies [200%] | 8h | 272 |
| 71 | 1.12.4 | C3: Security Camera Inspection |  | 1d | 2024-03-20 | 2024-03-21 | 70, 64 | 5d | 1d | Network Tester 3 | 8h | 200 |
| 72 | 1.12.5 | C3: Mirror Installation |  | 1d | 2024-03-20 | 2024-03-21 | 65, 70 | 0d |  | General Construction worker 3; Mirror [600%] | 8h | 352 |
| 73 | 1.12.6 | C3: Ends |  | 1d | 2024-03-21 | 2024-03-22 | 72 | 6d |  |  |  |  |
| 74 | 1.13 | **C4** |  | 7d | 2024-03-14 | 2024-03-25 |  | 1d |  |  | 48h | 3,108 |
| 75 | 1.13.1 | C4: Electricity Extension |  | 2d | 2024-03-14 | 2024-03-18 | 68 | 1d | 0d | Electrician Technician 3; Cord [600%] | 16h | 584 |
| 76 | 1.13.2 | C4: Security Camera Installation |  | 1d | 2024-03-18 | 2024-03-19 | 75, 69 | 2d | 1d | Camera/Alarm System installer 3; Camera [600%] | 8h | 1,700 |
| 77 | 1.13.3 | C4: Cleaning |  | 1d | 2024-03-21 | 2024-03-22 | 76, 70, 72 | 0d |  | General Construction worker 3; Cleaning Supplies [200%] | 8h | 272 |
| 78 | 1.13.4 | C4: Security Camera Inspection |  | 1d | 2024-03-22 | 2024-03-25 | 77, 71 | 4d | 1d | Network Tester 3 | 8h | 200 |
| 79 | 1.13.5 | C4: Mirror Installation |  | 1d | 2024-03-22 | 2024-03-25 | 72, 77 | 0d |  | General Construction worker 3; Mirror [600%] | 8h | 352 |
| 80 | 1.13.6 | C4: Ends | milestone | 0d | 2024-03-25 | 2024-03-25 | 79 | 5d |  |  |  |  |

Notes:
- 53: This section is located on the "Middle East" side of the store, refer to the Misc Docs tab on the PMP file.
- 60: This section is located on the "Centre East" side of the store, refer to the Misc Docs tab on the PMP file.
- 67: This section is located on the "Centre East" side of the store, refer to the Misc Docs tab on the PMP file.
- 74: This section is located on the "Centre East" side of the store, refer to the Misc Docs tab on the PMP file.

| ID | WBS | Task | Type | Duration | Start | Finish | Predecessors | Total slack | Free slack | Resources | Work | Cost |
| --- | --- | --- | --- | --- | --- | --- | --- | --- | --- | --- | --- | --- |
| 81 | 1.14 | **C5** |  | 8d | 2024-03-18 | 2024-03-28 |  | 1d |  |  | 56h | 3,308 |
| 82 | 1.14.1 | C5: Electricity Extension |  | 2d | 2024-03-18 | 2024-03-20 | 75 | 1d | 0d | Electrician Technician 3; Cord [600%] | 16h | 584 |
| 83 | 1.14.2 | C5: Security Camera Installation |  | 2d | 2024-03-20 | 2024-03-22 | 82, 76 | 1d |  | Camera/Alarm System installer 3; Camera [600%] | 16h | 1,900 |
| 84 | 1.14.3 | C5: Cleaning |  | 1d | 2024-03-25 | 2024-03-26 | 83, 77, 79 | 0d |  | General Construction worker 3; Cleaning Supplies [200%] | 8h | 272 |
| 85 | 1.14.4 | C5: Security Camera Inspection |  | 1d | 2024-03-26 | 2024-03-27 | 84, 78 | 3d |  | Network Tester 3 | 8h | 200 |
| 86 | 1.14.5 | C5: Mirror Installation |  | 1d | 2024-03-26 | 2024-03-27 | 79, 84 | 0d |  | General Construction worker 3; Mirror [600%] | 8h | 352 |
| 87 | 1.14.6 | C5: Ends |  | 1d | 2024-03-27 | 2024-03-28 | 86 | 0d |  |  |  |  |
| 88 | 1.15 | **C6** |  | 9d | 2024-03-13 | 2024-03-26 |  | 4d |  |  | 40h | 2,276 |
| 89 | 1.15.1 | C6: Electricity Extension |  | 1d | 2024-03-13 | 2024-03-14 | 47 | 7d | 1d | Electrician Technician 2; Cord [400%] | 8h | 312 |
| 90 | 1.15.2 | C6: Security Camera Installation |  | 1d | 2024-03-15 | 2024-03-18 | 89, 48 | 6d | 4d | Camera/Alarm System installer 2; Camera [400%] | 8h | 1,200 |
| 91 | 1.15.3 | C6: Cleaning |  | 1d | 2024-03-22 | 2024-03-25 | 90, 49, 51 | 2d | 0d | Cleaning Supplies; General Construction worker 2 | 8h | 252 |
| 92 | 1.15.4 | C6: Security Camera Inspection |  | 1d | 2024-03-25 | 2024-03-26 | 91, 50 | 4d |  | Network Tester 2 | 8h | 200 |
| 93 | 1.15.5 | C6: Mirror Installation |  | 1d | 2024-03-25 | 2024-03-26 | 51, 91 | 2d | 0d | General Construction worker 2; Mirror [400%] | 8h | 312 |
| 94 | 1.15.6 | C6: Ends | milestone | 0d | 2024-03-26 | 2024-03-26 | 93 | 2d |  |  |  |  |
| 95 | 1.16 | **C7** |  | 6d | 2024-03-06 | 2024-03-14 |  | 6d |  |  | 56h | 3,308 |
| 96 | 1.16.1 | C7: Electricity Extension |  | 2d | 2024-03-06 | 2024-03-08 | 2 | 6d | 0d | Electrician Technician 4; Cord [600%] | 16h | 584 |
| 97 | 1.16.2 | C7: Security Camera Installation |  | 2d | 2024-03-08 | 2024-03-12 | 96 | 6d | 0d | Camera/Alarm System installer 4; Camera [600%] | 16h | 1,900 |
| 98 | 1.16.3 | C7: Cleaning |  | 1d | 2024-03-12 | 2024-03-13 | 97 | 6d | 0d | General Construction worker 4; Cleaning Supplies [200%] | 8h | 272 |
| 99 | 1.16.4 | C7: Security Camera Inspection |  | 1d | 2024-03-13 | 2024-03-14 | 98 | 8d | 1d | Network Tester 4 | 8h | 200 |
| 100 | 1.16.5 | C7: Mirror Installation |  | 1d | 2024-03-13 | 2024-03-14 | 98 | 6d | 0d | General Construction worker 4; Mirror [600%] | 8h | 352 |
| 101 | 1.16.6 | C7: Ends | milestone | 0d | 2024-03-14 | 2024-03-14 | 100 | 12d |  |  |  |  |
| 102 | 1.17 | **D1** |  | 7d | 2024-03-08 | 2024-03-19 |  | 6d |  |  | 64h | 4,908 |
| 103 | 1.17.1 | D1: Electricity Extension |  | 2d | 2024-03-08 | 2024-03-12 | 96 | 6d | 0d | Electrician Technician 4; Cord [500%] | 16h | 564 |
| 104 | 1.17.2 | D1: Security Camera Installation |  | 1d | 2024-03-12 | 2024-03-13 | 103, 97 | 6d | 0d | Camera/Alarm System installer 4; Camera [400%] | 8h | 1,200 |
| 105 | 1.17.3 | D1: Alarm System Installation |  | 1d | 2024-03-13 | 2024-03-14 | 104 | 6d | 0d | Camera/Alarm System installer 4; Alarm System Unit | 8h | 2,200 |
| 106 | 1.17.4 | D1: Cleaning |  | 1d | 2024-03-14 | 2024-03-15 | 105, 98, 100 | 6d | 0d | General Construction worker 4; Cleaning Supplies [200%] | 8h | 272 |
| 107 | 1.17.5 | D1: Security Camera Inspection |  | 1d | 2024-03-15 | 2024-03-18 | 106, 99 | 7d | 0d | Network Tester 4 | 8h | 200 |
| 108 | 1.17.6 | D1: Alarm System Inspection |  | 1d | 2024-03-18 | 2024-03-19 | 107, 106 | 7d | 0d | Network Tester 4 | 8h | 200 |
| 109 | 1.17.7 | D1: Mirror Installation |  | 1d | 2024-03-15 | 2024-03-18 | 100, 106 | 6d | 0d | General Construction worker 4; Mirror [200%] | 8h | 272 |
| 110 | 1.17.8 | D1: Ends | milestone | 0d | 2024-03-18 | 2024-03-18 | 109 | 10d |  |  |  |  |

Notes:
- 81: This section is located on the "Centre West" side of the store, refer to the Misc Docs tab on the PMP file.
- 88: This section is located on the "Centre West" side of the store, refer to the Misc Docs tab on the PMP file.
- 95: This section is located on the "North West" side of the store, refer to the Misc Docs tab on the PMP file.
- 102: This section is located on the "Left Entrance" side of the store, refer to the Misc Docs tab on the PMP file.

| ID | WBS | Task | Type | Duration | Start | Finish | Predecessors | Total slack | Free slack | Resources | Work | Cost |
| --- | --- | --- | --- | --- | --- | --- | --- | --- | --- | --- | --- | --- |
| 111 | 1.18 | **D2** |  | 7d | 2024-03-12 | 2024-03-21 |  | 6d |  |  | 64h | 7,488 |
| 112 | 1.18.1 | D2: Electricity Extension |  | 2d | 2024-03-12 | 2024-03-14 | 103 | 6d | 0d | Electrician Technician 4; Cord [800%] | 16h | 624 |
| 113 | 1.18.2 | D2: Security Camera Installation |  | 1d | 2024-03-14 | 2024-03-15 | 112, 105 | 6d | 0d | Camera/Alarm System installer 4; Camera [600%] | 8h | 1,700 |
| 114 | 1.18.3 | D2: Alarm System Installation |  | 1d | 2024-03-15 | 2024-03-18 | 113 | 6d | 0d | Camera/Alarm System installer 4; Alarm System Unit [200%] | 8h | 4,200 |
| 115 | 1.18.4 | D2: Cleaning |  | 1d | 2024-03-18 | 2024-03-19 | 114, 106, 109 | 6d | 0d | General Construction worker 4; Cleaning Supplies [300%] | 8h | 292 |
| 116 | 1.18.5 | D2: Security Camera Inspection |  | 1d | 2024-03-19 | 2024-03-20 | 115, 108 | 7d | 0d | Network Tester 4 | 8h | 200 |
| 117 | 1.18.6 | D2: Alarm System Inspection |  | 1d | 2024-03-20 | 2024-03-21 | 116, 115 | 7d |  | Network Tester 4 | 8h | 200 |
| 118 | 1.18.7 | D2: Mirror Installation |  | 1d | 2024-03-19 | 2024-03-20 | 109, 115 | 6d | 0d | General Construction worker 4; Mirror [200%] | 8h | 272 |
| 119 | 1.18.8 | D2: Ends | milestone | 0d | 2024-03-20 | 2024-03-20 | 118 | 6d |  |  |  |  |
| 120 | 1.19 | Training For Counter Theft |  | 2d | 2024-03-28 | 2024-04-01 | 31, 94, 87, 119 | 0d |  | Trainer 1; Tainer 2 | 32h | 1,408 |

Notes:
- 111: This section is located on the "Right Entrance" side of the store, refer to the Misc Docs tab on the PMP file.
